# 健身训练与饮食管理系统（FTDMS）项目计划

Schedule from GanttProject, 2026-09-28 to 2026-12-30.
软件工程课程 G13 小组
依据《软件开发计划 SDP》V1.6 第 7.1 条 WBS、7.2 条进度表与 7.4 条里程碑编制。 / 8 个阶段、41 个工作包、7 个里程碑；资源为方文锦（需求与后端）、陈智杰（前端与原型）。 / 日历按自然日计（项目周期 2026-09-28 ～ 2026-12-30，94 天 / 14 周）。

## Calendars

- Project calendar: Mon-Sun working.

## Resources

| Resource | Group | Rate |
| --- | --- | --- |
| 方文锦 | 需求与后端 | 25 |
| 陈智杰 | 前端与原型 | 25 |

## Schedule

| ID | WBS | Task | Type | Duration | Start | Finish | Predecessors | Resources | Is done |
| --- | --- | --- | --- | --- | --- | --- | --- | --- | --- |
| 1 | 1 | **1 可行性分析** |  | 14d | 2026-09-28 | 2026-10-11 |  |  | false |
| 2 | 1.1 | 1.1 分析准备与候选方案论证 |  | 3d | 2026-09-28 | 2026-09-30 |  | 方文锦 | false |
| 3 | 1.2 | 1.2 技术可行性分析 |  | 3d | 2026-10-01 | 2026-10-03 | 2 | 方文锦 | false |
| 4 | 1.3 | 1.3 经济可行性分析 |  | 2d | 2026-10-01 | 2026-10-02 | 2 | 方文锦 | false |
| 5 | 1.4 | 1.4 实施可行性分析 |  | 2d | 2026-10-01 | 2026-10-02 | 2 | 陈智杰 | false |
| 6 | 1.5 | 1.5 风险识别与评价 |  | 2d | 2026-10-04 | 2026-10-05 | 3, 4, 5 | 方文锦 | false |
| 7 | 1.6 | 1.6 FAR 编制与评审 |  | 6d | 2026-10-06 | 2026-10-11 | 6 | 方文锦; 陈智杰 | false |
| 8 | 1.7 | M1 需求与技术方案冻结 | milestone | 0d | 2026-10-11 | 2026-10-11 |  |  | false |
| 9 | 2 | **2 需求分析** |  | 35d | 2026-09-28 | 2026-11-01 |  |  | false |
| 10 | 2.1 | 2.1 需求调研 |  | 4d | 2026-09-28 | 2026-10-01 |  | 方文锦; 陈智杰 | false |
| 11 | 2.2 | 2.2 需求收集 |  | 4d | 2026-10-02 | 2026-10-05 | 10 | 方文锦 | false |
| 12 | 2.3 | 2.3 需求整理 |  | 4d | 2026-10-06 | 2026-10-09 | 11 | 方文锦; 陈智杰 | false |
| 13 | 2.4 | 2.4 需求分析 |  | 8d | 2026-10-10 | 2026-10-17 | 12 | 方文锦; 陈智杰 | false |
| 14 | 2.5 | 2.5 需求文档编写（第一阶段） |  | 4d | 2026-10-18 | 2026-10-21 | 13 | 方文锦; 陈智杰 | false |
| 15 | 2.6 | 2.6 SRS 国标版编写 |  | 7d | 2026-10-22 | 2026-10-28 | 14 | 方文锦; 陈智杰 | false |
| 16 | 2.7 | 2.7 原型走查与需求评审确认 |  | 4d | 2026-10-29 | 2026-11-01 | 15 | 方文锦; 陈智杰 | false |
| 17 | 3 | **3 数据层与后端核心** |  | 21d | 2026-10-05 | 2026-10-25 |  |  | false |
| 18 | 3.1 | 3.1 建表与索引 |  | 3d | 2026-10-05 | 2026-10-07 |  | 方文锦 | false |
| 19 | 3.2 | 3.2 鉴权与账户 |  | 3d | 2026-10-08 | 2026-10-10 | 18 | 方文锦 | false |
| 20 | 3.3 | 3.3 每日目标 |  | 2d | 2026-10-11 | 2026-10-12 | 19 | 方文锦 | false |
| 21 | 3.4 | 3.4 训练计划与记录 |  | 3d | 2026-10-13 | 2026-10-15 | 20 | 方文锦 | false |
| 22 | 3.5 | 3.5 饮食与营养换算 |  | 3d | 2026-10-16 | 2026-10-18 | 21 | 方文锦 | false |
| 23 | 3.6 | 3.6 体重 |  | 2d | 2026-10-19 | 2026-10-20 | 22 | 方文锦 | false |
| 24 | 3.7 | 3.7 统计 |  | 2d | 2026-10-21 | 2026-10-22 | 23 | 方文锦 | false |
| 25 | 3.8 | 3.8 后台管理 |  | 3d | 2026-10-23 | 2026-10-25 | 24 | 方文锦 | false |
| 26 | 3.9 | M2 后端核心接口可联调 | milestone | 0d | 2026-10-25 | 2026-10-25 |  |  | false |

Notes:
- 1: 阶段 1：2026-09-28 ～ 2026-10-11
- 2: WBS 1.1 责任人：方文锦 / 交付：评价准则与加权评分表、候选方案对比表（3 方案）、加权评分明细（附录 A）
- 3: WBS 1.2 责任人：方文锦 / 交付：技术项评价表（10 项 5 分制）、技术难点清单、Spike 检查单 S1–S5
- 4: WBS 1.3 责任人：方文锦 / 交付：成本估算表（280 人时、约 8,467 元）、效益与投入产出分析
- 5: WBS 1.4 责任人：陈智杰 / 交付：合规核对表（Apache-2.0/个保法/生成式 AI 办法）、用户使用可行性说明
- 6: WBS 1.5 责任人：方文锦 / 交付：风险登记册 R1–R10（概率×影响分级）、风险对策与验证时点
- 7: WBS 1.6 责任人：方文锦、陈智杰 / 交付：FAR 初稿、附录 C–E 系统图与数据字典、评审结论「有条件可行」
- 8: 里程碑：M1 需求与技术方案冻结（计划 2026-10-11）
- 9: 阶段 2：2026-09-28 ～ 2026-11-01
- 10: WBS 2.1 责任人：方文锦、陈智杰 / 交付：用户场景与痛点清单、用户类别与代表（U1 陈羿冲 / U2 方文锦）、目标与边界
- 11: WBS 2.2 责任人：方文锦 / 交付：功能需求候选清单（8 模块）、非功能需求候选清单、约束与假设清单
- 12: WBS 2.3 责任人：方文锦、陈智杰 / 交付：需求条目表 FR-01～FR-32 / NFR-01～NFR-12、优先级与验收依据表
- 13: WBS 2.4 责任人：方文锦、陈智杰 / 交付：业务规则表、数据字典（12 表 / 76 元素）、状态转化图与 E-R 图、需求追踪矩阵
- 14: WBS 2.5 责任人：方文锦、陈智杰 / 交付：第一阶段需求与技术方案说明书 v1.0、11 页线框原型 prototype.html
- 15: WBS 2.6 责任人：方文锦、陈智杰 / 交付：SRS V1.0（GB/T 8567 第 7.11 条）、结构图/用例图/E-R/状态图与附录
- 16: WBS 2.7 责任人：方文锦、陈智杰 / 交付：走查意见 5 条闭环（10-23）、需求阶段评审 PPT、评审结论与需求基线
- 17: 阶段 3：2026-10-05 ～ 2026-10-25
- 18: WBS 3.1 责任人：方文锦 / 交付：schema.sql v1.0（12 张表、联合索引与唯一键）
- 19: WBS 3.2 责任人：方文锦 / 交付：A 族接口、JWT 与归属校验、统一返回与异常处理
- 20: WBS 3.3 责任人：方文锦 / 交付：B 族接口、按 effective_date 留版本
- 21: WBS 3.4 责任人：方文锦 / 交付：C 族接口、计划/记录分离与同事务写入
- 22: WBS 3.5 责任人：方文锦 / 交付：D 族接口、营养快照与按比例换算
- 23: WBS 3.6 责任人：方文锦 / 交付：E 族接口、(user_id, record_date) 唯一 upsert
- 24: WBS 3.7 责任人：方文锦 / 交付：F 族接口、完成率与缺失不补零口径
- 25: WBS 3.8 责任人：方文锦 / 交付：H 族接口、动作库/食物库/账户状态与 ADMIN 鉴权
- 26: 里程碑：M2 后端核心接口可联调（计划 2026-10-25）

| ID | WBS | Task | Type | Duration | Start | Finish | Predecessors | Resources | Is done |
| --- | --- | --- | --- | --- | --- | --- | --- | --- | --- |
| 27 | 4 | **4 前端页面与图表** |  | 21d | 2026-10-19 | 2026-11-08 |  |  | false |
| 28 | 4.1 | 4.1 登录与设置 |  | 4d | 2026-10-19 | 2026-10-22 |  | 陈智杰 | false |
| 29 | 4.2 | 4.2 训练饮食录入 |  | 5d | 2026-10-23 | 2026-10-27 | 28 | 陈智杰 | false |
| 30 | 4.3 | 4.3 体重记录 |  | 3d | 2026-10-28 | 2026-10-30 | 29 | 陈智杰 | false |
| 31 | 4.4 | 4.4 统计图表 |  | 5d | 2026-10-31 | 2026-11-04 | 30 | 陈智杰 | false |
| 32 | 4.5 | 4.5 后台管理页 |  | 4d | 2026-11-05 | 2026-11-08 | 31 | 陈智杰 | false |
| 33 | 4.6 | M3 Web 端全流程可用 | milestone | 0d | 2026-11-08 | 2026-11-08 |  |  | false |
| 34 | 5 | **5 AI 分析模块** |  | 21d | 2026-11-09 | 2026-11-29 |  |  | false |
| 35 | 5.1 | 5.1 授权与撤回 |  | 4d | 2026-11-09 | 2026-11-12 |  | 方文锦 | false |
| 36 | 5.2 | 5.2 数据汇总与摘要 |  | 4d | 2026-11-13 | 2026-11-16 | 35 | 方文锦 | false |
| 37 | 5.3 | 5.3 模型接入 |  | 5d | 2026-11-17 | 2026-11-21 | 36 | 方文锦 | false |
| 38 | 5.4 | 5.4 报告生成与历史 |  | 4d | 2026-11-22 | 2026-11-25 | 37 | 方文锦; 陈智杰 | false |
| 39 | 5.5 | 5.5 一致性核对与降级 |  | 4d | 2026-11-26 | 2026-11-29 | 38 | 陈智杰 | false |
| 40 | 5.6 | M4 AI 分析全链路打通 | milestone | 0d | 2026-11-29 | 2026-11-29 |  |  | false |
| 41 | 6 | **6 移动端 Android 封装** |  | 17d | 2026-11-16 | 2026-12-02 |  |  | false |
| 42 | 6.1 | 6.1 手机布局适配 |  | 6d | 2026-11-16 | 2026-11-21 |  | 陈智杰 | false |
| 43 | 6.2 | 6.2 Capacitor 工程与空壳包 |  | 6d | 2026-11-22 | 2026-11-27 | 42 | 陈智杰 | false |
| 44 | 6.3 | 6.3 打包与真机调试 |  | 5d | 2026-11-28 | 2026-12-02 | 43 | 陈智杰 | false |
| 45 | 6.4 | M5 最初成品可用 | milestone | 0d | 2026-12-02 | 2026-12-02 |  |  | false |
| 46 | 7 | **7 集成测试与验收** |  | 18d | 2026-12-03 | 2026-12-20 |  |  | false |
| 47 | 7.1 | 7.1 功能用例 |  | 6d | 2026-12-03 | 2026-12-08 |  | 陈智杰 | false |
| 48 | 7.2 | 7.2 跨账号与隐私验收 |  | 4d | 2026-12-09 | 2026-12-12 | 47 | 陈智杰 | false |
| 49 | 7.3 | 7.3 缺陷复测 |  | 4d | 2026-12-13 | 2026-12-16 | 48 | 方文锦; 陈智杰 | false |
| 50 | 7.4 | 7.4 性能检查 |  | 4d | 2026-12-17 | 2026-12-20 | 49 | 方文锦 | false |
| 51 | 7.5 | M6 测试验收通过 | milestone | 0d | 2026-12-20 | 2026-12-20 |  |  | false |

Notes:
- 27: 阶段 4：2026-10-19 ～ 2026-11-08
- 28: WBS 4.1 责任人：陈智杰 / 交付：登录/注册页、会话令牌管理、设置与资料页
- 29: WBS 4.2 责任人：陈智杰 / 交付：训练计划与记录页、饮食录入与换算提示
- 30: WBS 4.3 责任人：陈智杰 / 交付：体重录入与历史列表、有效天数展示
- 31: WBS 4.4 责任人：陈智杰 / 交付：完成率、摄入趋势、体重趋势三图（ECharts 6.x）
- 32: WBS 4.5 责任人：陈智杰 / 交付：动作库/食物库/账户状态维护页
- 33: 里程碑：M3 Web 端全流程可用（计划 2026-11-08）
- 34: 阶段 5：2026-11-09 ～ 2026-11-29
- 35: WBS 5.1 责任人：方文锦 / 交付：ai_consent 状态机、scope=BODY_DIET_TRAINING_30D、撤回留痕
- 36: WBS 5.2 责任人：方文锦 / 交付：统计汇总与 ≤8 KB 摘要 JSON、身份字段剔除
- 37: WBS 5.3 责任人：方文锦 / 交付：Ollama + Qwen3-4B-Instruct-2507 接入、固定模板与超时控制
- 38: WBS 5.4 责任人：方文锦、陈智杰 / 交付：G 族接口、五段式报告页与历史列表、物理删除
- 39: WBS 5.5 责任人：陈智杰 / 交付：输出与 summary_json 核对、DEGRADED 降级与免责提示
- 40: 里程碑：M4 AI 分析全链路打通（计划 2026-11-29）
- 41: 阶段 6：2026-11-16 ～ 2026-12-02
- 42: WBS 6.1 责任人：陈智杰 / 交付：320 px 起自适应、底部 5 项导航、触控目标 ≥44 pt
- 43: WBS 6.2 责任人：陈智杰 / 交付：Capacitor 7 工程、空壳包验证、Web 兜底
- 44: WBS 6.3 责任人：陈智杰 / 交付：APK 20–40 MB、真机安装登录与主流程
- 45: 里程碑：M5 最初成品可用（计划 2026-12-02）
- 46: 阶段 7：2026-12-03 ～ 2026-12-20
- 47: WBS 7.1 责任人：陈智杰 / 交付：功能用例执行记录、缺陷清单初稿
- 48: WBS 7.2 责任人：陈智杰 / 交付：跨账号隔离、授权撤回、删除报告与隐私专项结论
- 49: WBS 7.3 责任人：方文锦、陈智杰 / 交付：缺陷整改与回归、遗留缺陷分级
- 50: WBS 7.4 责任人：方文锦 / 交付：响应时间与并发实测、指标回填
- 51: 里程碑：M6 测试验收通过（计划 2026-12-20）

| ID | WBS | Task | Type | Duration | Start | Finish | Predecessors | Resources | Is done |
| --- | --- | --- | --- | --- | --- | --- | --- | --- | --- |
| 52 | 8 | **8 验收答辩** |  | 10d | 2026-12-21 | 2026-12-30 |  |  | false |
| 53 | 8.1 | 8.1 使用说明与部署文档 |  | 4d | 2026-12-21 | 2026-12-24 |  | 方文锦 | false |
| 54 | 8.2 | 8.2 答辩材料 |  | 4d | 2026-12-25 | 2026-12-28 | 53 | 陈智杰 | false |
| 55 | 8.3 | 8.3 演示准备与归档 |  | 2d | 2026-12-29 | 2026-12-30 | 54 | 方文锦; 陈智杰 | false |
| 56 | 8.4 | M7 结项答辩完成 | milestone | 0d | 2026-12-30 | 2026-12-30 |  |  | false |
| 57 | 9 | **9 总体设计报告与设计基线** |  | 9d | 2026-11-14 | 2026-11-22 |  |  |  |
| 58 | 9.1 | 9.1 设计输入复核与追踪 |  | 1d | 2026-11-14 | 2026-11-14 |  | 方文锦 |  |
| 59 | 9.2 | 9.2 总体设计 |  | 2d | 2026-11-15 | 2026-11-16 | 58 | 方文锦 |  |
| 60 | 9.3 | 9.3 详细设计 |  | 2d | 2026-11-17 | 2026-11-18 | 59 | 方文锦; 陈智杰 |  |
| 61 | 9.4 | 9.4 测试文档 |  | 2d | 2026-11-19 | 2026-11-20 | 60 | 陈智杰 |  |
| 62 | 9.5 | 9.5 用户文档 |  | 2d | 2026-11-19 | 2026-11-20 | 60 | 陈智杰 |  |
| 63 | 9.6 | 9.6 计划/WBS/甘特图一致性核对 |  | 1d | 2026-11-21 | 2026-11-21 | 61, 62 | 方文锦 |  |
| 64 | 9.7 | 9.7 设计评审与基线发布 |  | 1d | 2026-11-22 | 2026-11-22 | 63 | 方文锦; 陈智杰 |  |
| 65 | 9.8 | D1 设计文档基线 |  | 0d | 2026-11-22 | 2026-11-22 | 64SS | 方文锦 [0%]; 陈智杰 [0%] |  |

Notes:
- 52: 阶段 8：2026-12-21 ～ 2026-12-30
- 53: WBS 8.1 责任人：方文锦 / 交付：使用说明、部署文档（环境/初始化/启动/APK 构建）
- 54: WBS 8.2 责任人：陈智杰 / 交付：答辩 PPT、演示脚本、项目开发总结报告
- 55: WBS 8.3 责任人：方文锦、陈智杰 / 交付：演示环境确认、结项材料归档
- 56: 里程碑：M7 结项答辩完成（计划 2026-12-30）
